# Initial Project Plan

Schedule from MS Project, 2015-04-10 to 2015-06-04, status date 2015-05-03, costs in $, A marks actual dates.

## Calendars

- Standard: Mon-Fri 08:00-12:00, 13:00-17:00; Sat-Sun off.

## Resources

| Resource | Rate |
| --- | --- |
| Spencer | 150 |
| Jason | 150 |
| Ian | 150 |
| Sebastian R. | 150 |
| Sebastian M. | 150 |

## Schedule

| ID | WBS | Task | Type | Duration | Start | Finish | Predecessors | Complete | Remaining | Total slack | Free slack | Constraint | Resources | Work | Actual work | Cost | Actual cost |
| --- | --- | --- | --- | --- | --- | --- | --- | --- | --- | --- | --- | --- | --- | --- | --- | --- | --- |
| 1 | 1 | **Simulation + Small integration** |  | 29.62d | 2015-04-10 08:00 A | 2015-05-21 14:00 |  | 64% | 10.73d | -3.62d | 0d |  |  | 134h | 90h | 20,100 | 13,500 |
| 2 | 1.1 | **Theory** |  | 10d | 2015-04-12 12:00 A | 2015-04-26 14:00 A |  | 100% |  |  |  |  |  | 20h | 20h | 3,000 | 3,000 |
| 3 | 1.1.1 | Determine how the waveform should look |  | 8h | 2015-04-12 12:00 A | 2015-04-16 14:00 A |  | 100% |  |  |  |  | Jason; Spencer | 16h | 16h | 2,400 | 2,400 |
| 4 | 1.1.2 | Identify design bottlenecks |  | 2h | 2015-04-26 12:00 A | 2015-04-26 14:00 A |  | 100% |  |  |  |  | Jason; Spencer | 4h | 4h | 600 | 600 |
| 5 | 1.2 | **VGA** |  | 13.62d | 2015-04-12 12:00 A | 2015-04-30 14:00 A |  | 100% |  |  |  |  |  | 23h | 23h | 3,450 | 3,450 |
| 6 | 1.2.1 | Determine how the screen output should look |  | 5h | 2015-04-12 12:00 A | 2015-04-12 17:00 A |  | 100% |  |  |  |  | Sebastian R. | 5h | 5h | 750 | 750 |
| 7 | 1.2.2 | **VHDL** |  | 10.12d | 2015-04-16 13:00 A | 2015-04-30 14:00 A | 6 | 100% |  |  |  |  |  | 18h | 18h | 2,700 | 2,700 |
| 8 | 1.2.2.1 | Write Rendering Block |  | 8h | 2015-04-16 13:00 A | 2015-04-19 17:00 A |  | 100% |  |  |  |  | Sebastian R. | 8h | 8h | 1,200 | 1,200 |
| 9 | 1.2.2.2 | Write Sync Block |  | 2h | 2015-04-23 14:00 A | 2015-04-23 16:00 A |  | 100% |  |  |  |  | Sebastian R. | 2h | 2h | 300 | 300 |
| 10 | 1.2.2.3 | Write test bench |  | 2h | 2015-04-26 12:00 A | 2015-04-26 14:00 A | 8, 9 | 100% |  |  |  |  | Sebastian R. | 2h | 2h | 300 | 300 |
| 11 | 1.2.2.4 | Testing + Debugging |  | 6h | 2015-04-26 14:00 A | 2015-04-30 14:00 A | 10 | 100% |  |  |  |  | Sebastian R. | 6h | 6h | 900 | 900 |
| 12 | 1.2.2.5 | VGA Done | milestone | 0d | 2015-04-30 14:00 A | 2015-04-30 14:00 A | 11 | 100% |  |  |  |  | Sebastian R. |  |  |  |  |
| 13 | 1.3 | **Synthesizer** |  | 28.62d | 2015-04-12 12:00 A | 2015-05-21 14:00 |  | 30% | 20.14d | -8.62d | 0d |  |  | 29h | 10h | 4,350 | 1,500 |
| 14 | 1.3.1 | **Theory** |  | 5d | 2015-05-03 17:00 A | 2015-05-10 17:00 |  | 50% | 2.5d | 0d |  |  |  | 10h | 6h | 1,500 | 900 |
| 15 | 1.3.1.1 | Determine Synth functions |  | 8h | 2015-05-03 17:00 A | 2015-05-10 17:00 | 3 | 50% | 4h | -1.5d | 0d | start no earlier than 2015-05-03 17:00 | Jason; Spencer | 10h | 6h | 1,500 | 900 |
| 16 | 1.3.2 | **VHDL** |  | 28.62d | 2015-04-12 12:00 A | 2015-05-21 14:00 |  | 21% | 22.6d | -13.62d | 0d |  |  | 19h | 4h | 2,850 | 600 |
| 17 | 1.3.2.1 | Write FIFO |  | 4h | 2015-04-12 12:00 A | 2015-04-12 16:00 A |  | 100% |  |  |  |  | Ian | 4h | 4h | 600 | 600 |
| 18 | 1.3.2.2 | Write Rom |  | 2h | 2015-05-03 17:00 | 2015-05-07 13:00 |  |  |  | -5d | 0d | start no earlier than 2015-05-03 17:00 | Ian | 2h |  | 300 |  |
| 19 | 1.3.2.3 | Write Synthesizer |  | 6h | 2015-05-10 17:00 | 2015-05-17 13:00 | 15 |  |  | -11.5d | 0d | start no earlier than 2015-05-03 17:00 | Ian | 6h |  | 900 |  |
| 20 | 1.3.2.4 | Write test bench |  | 3h | 2015-05-17 13:00 | 2015-05-17 16:00 | 17, 18, 19 |  |  | -11.5d | 0d | start no earlier than 2015-05-03 17:00 | Ian | 3h |  | 450 |  |
| 21 | 1.3.2.5 | Testing + Debugging |  | 4h | 2015-05-17 16:00 | 2015-05-21 14:00 | 20 |  |  | -13.62d | 0d | start no earlier than 2015-05-03 17:00 | Ian | 4h |  | 600 |  |
| 22 | 1.3.2.6 | Synthesizer Done | milestone | 0d | 2015-05-21 14:00 | 2015-05-21 14:00 | 21 |  |  | -13.62d | 0d | start no earlier than 2015-05-03 17:00 | Ian |  |  |  |  |
| 23 | 1.4 | **Amplitude + Frequency** |  | 26d | 2015-04-10 08:00 A | 2015-05-17 13:00 |  | 59% | 10.68d | 0d |  |  |  | 62h | 37h | 9,300 | 5,550 |
| 24 | 1.4.1 | **Amplitude Modulation** |  | 24.88d | 2015-04-10 08:00 A | 2015-05-14 16:00 |  | 45% | 13.57d | -8.88d | 0d |  |  | 22h | 10h | 3,300 | 1,500 |
| 25 | 1.4.1.1 | **Theory** |  | 6d | 2015-04-10 08:00 A | 2015-04-19 16:00 A |  | 100% |  |  |  |  |  | 6h | 6h | 900 | 900 |
| 26 | 1.4.1.1.1 | Determine how to amplify signal based on different volume |  | 6h | 2015-04-10 08:00 A | 2015-04-19 16:00 A |  | 100% |  |  |  |  | Jason; Spencer | 6h | 6h | 900 | 900 |

| ID | WBS | Task | Type | Duration | Start | Finish | Predecessors | Complete | Remaining | Total slack | Free slack | Constraint | Resources | Work | Actual work | Cost | Actual cost |
| --- | --- | --- | --- | --- | --- | --- | --- | --- | --- | --- | --- | --- | --- | --- | --- | --- | --- |
| 27 | 1.4.1.2 | **VHDL** |  | 23.88d | 2015-04-12 17:00 A | 2015-05-14 16:00 |  | 25% | 17.91d | -8.88d | 0d |  |  | 16h | 4h | 2,400 | 600 |
| 28 | 1.4.1.2.1 | Write Input |  | 2h | 2015-04-12 17:00 A | 2015-05-03 18:00 |  | 50% | 1h | -5d | 0d |  | Sebastian R. | 2h | 1h | 300 | 150 |
| 29 | 1.4.1.2.2 | Write FIFO |  | 3h | 2015-04-19 17:00 A | 2015-04-23 14:00 A |  | 100% |  |  |  |  | Sebastian R. | 3h | 3h | 450 | 450 |
| 30 | 1.4.1.2.3 | Write Amplitude Modulation Block |  | 4h | 2015-05-03 17:00 | 2015-05-10 13:00 | 26 |  |  | -10d | 0d | start no earlier than 2015-05-03 17:00 | Sebastian M. | 4h |  | 600 |  |
| 31 | 1.4.1.2.4 | Design testbench |  | 4h | 2015-05-10 13:00 | 2015-05-14 13:00 | 28, 29, 30 |  |  | -10d | 0d | start no earlier than 2015-05-03 17:00 | Jason; Spencer | 4h |  | 600 |  |
| 32 | 1.4.1.2.5 | Testing + Debugging |  | 3h | 2015-05-14 13:00 | 2015-05-14 16:00 | 31 |  |  | -8.88d | 0d | start no earlier than 2015-05-03 17:00 | Sebastian M. | 3h |  | 450 |  |
| 33 | 1.4.1.2.6 | Amplitude Done | milestone | 0d | 2015-05-14 16:00 | 2015-05-14 16:00 | 32 |  |  | -8.88d | 0d | start no earlier than 2015-05-03 17:00 | Sebastian M. |  |  |  |  |
| 34 | 1.4.2 | **Frequency Adder** |  | 20d | 2015-04-16 14:00 A | 2015-05-14 14:00 |  | 60% | 8d | -8.62d | 0d |  |  | 26h | 16h | 3,900 | 2,400 |
| 35 | 1.4.2.1 | **Theory** |  | 0.38d | 2015-04-23 12:00 A | 2015-04-23 16:00 A |  | 100% |  |  |  |  |  | 8h | 8h | 1,200 | 1,200 |
| 36 | 1.4.2.1.1 | Determine how to add signals |  | 4h | 2015-04-23 12:00 A | 2015-04-23 16:00 A |  | 100% |  |  |  |  | Jason; Spencer | 8h | 8h | 1,200 | 1,200 |
| 37 | 1.4.2.2 | **VHDL** |  | 20d | 2015-04-16 14:00 A | 2015-05-14 14:00 |  | 50% | 10d | -8.62d | 0d |  |  | 18h | 8h | 2,700 | 1,200 |
| 38 | 1.4.2.2.1 | Write Inputs |  | 2h | 2015-04-16 14:00 A | 2015-04-16 16:00 A |  | 100% |  |  |  |  | Ian | 2h | 2h | 300 | 300 |
| 39 | 1.4.2.2.2 | Write FIFO |  | 3h | 2015-04-19 12:00 A | 2015-04-19 15:00 A |  | 100% |  |  |  |  | Ian | 3h | 3h | 450 | 450 |
| 40 | 1.4.2.2.3 | Write ROM |  | 3h | 2015-04-19 12:00 A | 2015-04-19 15:00 A |  | 100% |  |  |  |  | Ian | 3h | 3h | 450 | 450 |
| 41 | 1.4.2.2.4 | Write Frequency Adder block |  | 3h | 2015-05-03 17:00 | 2015-05-10 15:00 | 36 |  |  | -6.12d | 0d | start no earlier than 2015-05-03 17:00 | Sebastian M. | 3h |  | 450 |  |
| 42 | 1.4.2.2.5 | Design Test bench |  | 2h | 2015-05-14 12:00 | 2015-05-14 14:00 | 38, 39, 40, 41 |  |  | -8.62d | 0d | start no earlier than 2015-05-03 17:00 | Jason; Spencer | 4h |  | 600 |  |
| 43 | 1.4.2.2.6 | Testing + Debugging |  | 3h | 2015-05-03 17:00 | 2015-05-10 17:00 |  |  |  | -5d | 0d | start no earlier than 2015-05-03 17:00 | Sebastian M. | 3h |  | 450 |  |
| 44 | 1.4.2.2.7 | Frequency Done | milestone | 0d | 2015-05-10 17:00 | 2015-05-10 17:00 | 43 |  |  | -5d | 0d | start no earlier than 2015-05-03 17:00 | Sebastian M. |  |  |  |  |
| 45 | 1.4.3 | **Output** |  | 25d | 2015-04-12 12:00 A | 2015-05-17 13:00 |  | 79% | 5.36d | 0d |  |  |  | 14h | 11h | 2,100 | 1,650 |
| 46 | 1.4.3.1 | Research how to output audio |  | 6h | 2015-04-12 12:00 A | 2015-04-12 18:00 A |  | 100% |  |  |  |  | Sebastian M. | 6h | 6h | 900 | 900 |
| 47 | 1.4.3.2 | Write Audio out block |  | 2h | 2015-04-16 12:00 A | 2015-04-16 14:00 A | 46 | 100% |  |  |  |  | Sebastian M. | 2h | 2h | 300 | 300 |
| 48 | 1.4.3.3 | Write Test bench |  | 2h | 2015-05-03 17:00 | 2015-05-10 18:00 | 47 |  |  | -5d | 0d | start no earlier than 2015-05-03 17:00 | Sebastian M. | 2h |  | 300 |  |
| 49 | 1.4.3.4 | Testing + Debugging |  | 4h | 2015-04-19 12:00 A | 2015-05-17 13:00 | 48 | 75% | 1h | -10d | 0d |  | Sebastian M. | 4h | 3h | 600 | 450 |
| 50 | 1.4.3.5 | Audio Output Done | milestone | 0d | 2015-05-17 13:00 | 2015-05-17 13:00 | 49 |  |  | -10d | 0d | start no earlier than 2015-05-03 17:00 | Sebastian M. |  |  |  |  |

| ID | WBS | Task | Type | Duration | Start | Finish | Predecessors | Total slack | Free slack | Constraint | Resources | Work | Cost |
| --- | --- | --- | --- | --- | --- | --- | --- | --- | --- | --- | --- | --- | --- |
| 51 | 2 | **Final Integration** |  | 1.38d | 2015-05-21 14:00 | 2015-05-24 14:00 | 1 | -13.62d | 0d |  |  | 14h | 2,100 |
| 52 | 2.1 | Write Test bench |  | 2h | 2015-05-21 14:00 | 2015-05-21 16:00 |  | -13.88d | 0d | start no earlier than 2015-05-03 17:00 | Jason; Spencer | 4h | 600 |
| 53 | 2.2 | Testing + Debugging |  | 2h | 2015-05-24 12:00 | 2015-05-24 14:00 | 52 | -11.5d | 0d | start no earlier than 2015-05-03 17:00 | Ian; Jason; Sebastian M.; Sebastian R.; Spencer | 10h | 1,500 |
| 54 | 2.3 | Integration Done | milestone | 0d | 2015-05-24 14:00 | 2015-05-24 14:00 | 53 | -11.38d | 0d | start no earlier than 2015-05-03 17:00 |  |  |  |
| 55 | 3 | **Implementation** |  | 0d | 2015-05-24 14:00 | 2015-05-24 17:00 | 51 | 5d | 0d |  |  | 15h | 2,250 |
| 56 | 3.1 | Load code onto FPGA |  | 1h | 2015-05-24 14:00 | 2015-05-24 15:00 |  | 5d | 0d | start no earlier than 2015-05-03 17:00 | Ian; Jason; Sebastian M.; Sebastian R.; Spencer | 5h | 750 |
| 57 | 3.2 | Debug |  | 2h | 2015-05-24 15:00 | 2015-05-24 17:00 | 56 | 5d | 0d |  | Ian; Jason; Sebastian M.; Sebastian R.; Spencer | 10h | 1,500 |
| 58 | 3.3 | Project Complete | milestone | 0d | 2015-05-24 17:00 | 2015-05-24 17:00 | 57 | 5d |  |  |  |  |  |
| 59 | 4 | **Other** |  | 20d | 2015-05-07 08:00 | 2015-06-04 08:00 |  | 0d |  |  |  | 12h | 1,800 |
| 60 | 4.1 | **Documentation** |  | 14.88d | 2015-05-07 14:00 | 2015-05-28 13:00 |  | 0d |  |  |  | 12h | 1,800 |
| 61 | 4.1.1 | Write Project Report |  | 2h | 2015-05-07 14:00 | 2015-05-07 17:00 | 51 | -11.38d | 0d | finish no later than 2015-05-07 17:00 | Jason; Spencer; Ian; Sebastian M.; Sebastian R. | 10h | 1,500 |
| 62 | 4.1.2 | Write Final Report |  | 2h | 2015-05-24 17:00 | 2015-05-28 13:00 | 55 | 4.5d |  | finish no later than 2015-06-04 17:00 | Jason; Spencer; Ian; Sebastian M.; Sebastian R. | 2h | 300 |
| 63 | 4.2 | **Major Milestones** |  | 20d | 2015-05-07 08:00 | 2015-06-04 08:00 |  | 0d |  |  |  |  |  |
| 64 | 4.2.1 | Project Report | milestone, manual | 0d | 2015-05-07 08:00 | 2015-05-07 08:00 |  |  |  | start no earlier than 2015-05-07 08:00 |  |  |  |
| 65 | 4.2.2 | Final Report + Demo | milestone, manual | 0d | 2015-06-04 08:00 | 2015-06-04 08:00 |  |  |  | start no earlier than 2015-06-04 08:00 |  |  |  |
